# Exemplo - Cronograma Preliminar do Projeto XYZ

Schedule from MS Project, 2016-04-28 to 2016-06-27, costs in €, A marks actual dates.
Microsoft

## Calendars

- Padrão: Mon-Fri 08:00-12:00, 13:00-17:00; Sat-Sun off.

## Resources

| Resource | Rate | Cost per use |
| --- | --- | --- |
| Jesuel | 100 |  |
| Letícia | 100 |  |
| Aluguel |  | 1500 |

## Schedule

| ID | WBS | Task | Duration | Start | Finish | Predecessors | Remaining | Baseline start | Baseline finish | Baseline duration | Total slack | Free slack | Constraint | Resources | Work | Cost | Baseline cost |
| --- | --- | --- | --- | --- | --- | --- | --- | --- | --- | --- | --- | --- | --- | --- | --- | --- | --- |
| 1 | 1 | Inicio | 1d | 2016-04-28 09:00 | 2016-04-29 09:00 |  |  |  |  |  | 0.75d | 0d | start no earlier than 2016-04-28 09:00 |  |  |  |  |
| 2 | 2 | **Projeto ORGAB** | 41.44d? | 2016-04-29 09:00 A | 2016-06-27 13:30 |  | 41.44d? | 2009-12-17 09:00 | 2022-06-22 09:00 | 3264d? | 0d |  |  | Aluguel | 143.25h | 15,825 | 6,280 |
| 3 | 2.1 | **Prospecção** | 11.16d? | 2016-04-29 09:00 A | 2016-05-16 10:15 |  | 11.16d? | 2016-03-18 09:00 | 2022-06-22 09:00 | 1633d? | 0.97d |  |  |  | 26.5h | 2,650 | 6,280 |
| 4 | 2.1.1 | **Proposta Técnica** | 11.16d? | 2016-04-29 09:00 A | 2016-05-16 10:15 |  | 11.16d? | 2016-03-18 09:00 | 2016-03-22 09:00 | 2d? | 0.97d |  |  |  | 26.5h | 2,650 | 4,360 |
| 5 | 2.1.1.1 | Estudar domínio de aplicação | 0.12d? | 2016-04-29 09:00 | 2016-04-29 10:00 | 1 |  | 2016-03-18 09:00 | 2016-03-21 09:00 | 1d? | 0.75d |  |  | Letícia | 1h | 100 | 1,200 |
| 6 | 2.1.1.2 | Redigir Proposta Técnica | 2.62d | 2016-04-30 09:00 A | 2016-05-12 11:00 | 5 | 2.62d | 2016-03-21 14:00 | 2016-03-23 14:00 | 2d? | 1.84d | 0d |  | Jesuel; Letícia | 23h | 2,300 | 2,400 |
| 7 | 2.1.1.3 | Revisar a Proposta Técnica | 0.25d? | 2016-05-12 11:00 | 2016-05-13 11:00 | 6 |  | 2016-03-23 14:00 | 2016-03-23 16:00 | 0.25d? | 1.09d | 0d |  | Letícia | 2h | 200 | 160 |
| 8 | 2.1.1.4 | Aprovar Proposta Técnica | 0.06d? | 2016-05-13 11:00 | 2016-05-16 10:15 | 7, 6 |  | 2016-03-23 16:00 | 2016-03-23 16:00 | 0d? | 0.97d | 0d |  | Letícia; Jesuel | 0.5h | 50 |  |
| 9 | 2.2 | **Planejamento** | 6d? | 2016-05-16 10:15 | 2016-05-24 10:15 |  |  |  |  |  | 0.22d |  |  |  | 17h | 1,700 |  |
| 10 | 2.2.1 | Estimativa Definitiva de Tamanho e Esforço | 1d? | 2016-05-16 10:15 | 2016-05-17 10:15 | 8 |  |  |  |  | 0.97d | 0d |  | Letícia [75%] | 6h | 600 |  |
| 11 | 2.2.2 | Cronograma Definitivo do Projeto | 1d? | 2016-05-17 10:15 | 2016-05-18 10:15 | 10 |  |  |  |  | 0.97d | 0d |  | Letícia [37.5%] | 3h | 300 |  |
| 12 | 2.2.3 | Plano de Projeto | 1d? | 2016-05-18 10:15 | 2016-05-24 10:15 | 11 |  |  |  |  | 0.22d |  |  | Jesuel | 8h | 800 |  |
| 13 | 2.3 | **Release 01** | 7.38d? | 2016-05-25 09:00 A | 2016-06-03 12:00 |  | 7.38d? | 2009-12-17 09:00 | 2009-12-18 09:00 | 1d? | 16.06d |  |  |  | 28.25h | 2,825 |  |
| 14 | 2.3.1 | **Desenvolvimento** | 2.72d? | 2016-05-25 09:00 A | 2016-05-27 15:45 |  | 2.72d? | 2009-12-17 09:00 | 2009-12-18 09:00 | 1d? | 0.66d |  |  |  | 9.25h | 925 |  |
| 15 | 2.3.1.1 | RFC01 - Manter Livros | 0.16d? | 2016-05-25 09:00 A | 2016-05-26 15:45 | 12 | 0.16d? |  |  |  | 0.66d | 0d |  | Letícia | 1.25h | 125 |  |
| 16 | 2.3.1.2 | RFC02 - Manter Emprestimos | 1d? | 2016-05-26 15:45 | 2016-05-27 15:45 | 15 |  |  |  |  | 0.66d | 0d |  | Letícia | 8h | 800 |  |
| 17 | 2.3.2 | **Teste** | 0.75d | 2016-05-27 15:45 | 2016-05-30 13:45 |  |  | 2009-12-17 09:00 | 2009-12-18 09:00 | 1d? | 0.66d |  |  |  | 6h | 600 |  |
| 18 | 2.3.2.1 | RFC01 - Manter Livros | 0.38d | 2016-05-27 15:45 | 2016-05-30 09:45 | 16 |  |  |  |  | 0.66d | 0d |  | Letícia | 3h | 300 |  |
| 19 | 2.3.2.2 | RFC02 - Manter Emprestimos | 0.38d | 2016-05-30 09:45 | 2016-05-30 13:45 | 18 |  |  |  |  | 0.66d | 0d |  | Letícia | 3h | 300 |  |
| 20 | 2.3.3 | **Implantação** | 0.12d? | 2016-05-30 13:45 | 2016-05-30 14:45 |  |  | 2009-12-17 09:00 | 2009-12-18 09:00 | 1d? | 18.84d |  |  |  | 1h | 100 |  |
| 21 | 2.3.3.1 | Git Hub | 0.12d? | 2016-05-30 13:45 | 2016-05-30 14:45 | 19 |  |  |  |  | 18.84d | 0d |  | Letícia | 1h | 100 |  |
| 22 | 2.3.4 | **Registro problemas (bugs)** | 1d? | 2016-05-30 14:45 | 2016-05-31 14:45 |  |  |  |  |  | 18.84d |  |  |  | 4h | 400 |  |
| 23 | 2.3.4.1 | Mantis | 1d? | 2016-05-30 14:45 | 2016-05-31 14:45 | 21 |  |  |  |  | 18.84d |  |  | Letícia [50%] | 4h | 400 |  |
| 24 | 2.3.5 | Status Report | 1d? | 2016-05-31 10:00 | 2016-06-03 12:00 | 19 |  |  |  |  | 0d |  |  | Jesuel | 8h | 800 |  |

| ID | WBS | Task | Duration | Start | Finish | Predecessors | Baseline start | Baseline finish | Baseline duration | Total slack | Free slack | Resources | Work | Cost |
| --- | --- | --- | --- | --- | --- | --- | --- | --- | --- | --- | --- | --- | --- | --- |
| 25 | 2.4 | **Release 02** | 6d? | 2016-06-03 13:00 | 2016-06-13 12:00 |  | 2009-12-17 09:00 | 2009-12-18 09:00 | 1d? | 0d |  |  | 35h | 3,500 |
| 26 | 2.4.1 | **Desenvolvimento** | 2d? | 2016-06-03 13:00 | 2016-06-07 12:00 |  | 2009-12-17 09:00 | 2009-12-18 09:00 | 1d? | 0d |  |  | 16h | 1,600 |
| 27 | 2.4.1.1 | RFC03 - Manter Eventos | 1d? | 2016-06-03 13:00 | 2016-06-06 12:00 | 24 |  |  |  | 0d |  | Letícia | 8h | 800 |
| 28 | 2.4.1.2 | RFC04 - Manter Usuários | 1d? | 2016-06-06 13:00 | 2016-06-07 12:00 | 27 |  |  |  | 0d |  | Letícia | 8h | 800 |
| 29 | 2.4.2 | **Teste** | 0.75d | 2016-06-07 13:00 | 2016-06-08 10:00 |  | 2009-12-17 09:00 | 2009-12-18 09:00 | 1d? | 0d |  |  | 6h | 600 |
| 30 | 2.4.2.1 | RFC03 - Manter Eventos | 0.38d | 2016-06-07 13:00 | 2016-06-07 16:00 | 28 |  |  |  | 0d |  | Letícia | 3h | 300 |
| 31 | 2.4.2.2 | RFC04 - Manter Usuários | 0.38d | 2016-06-07 16:00 | 2016-06-08 10:00 | 30 |  |  |  | 0d |  | Letícia | 3h | 300 |
| 32 | 2.4.3 | **Baseline de Configuração** | 0.12d? | 2016-06-08 10:00 | 2016-06-08 11:00 |  | 2009-12-17 09:00 | 2009-12-18 09:00 | 1d? | 12.19d |  |  | 1h | 100 |
| 33 | 2.4.3.1 | Git Hub | 0.12d? | 2016-06-08 10:00 | 2016-06-08 11:00 | 31 |  |  |  | 12.19d | 0d | Letícia | 1h | 100 |
| 34 | 2.4.4 | **Registro problemas (bugs)** | 1d? | 2016-06-08 11:00 | 2016-06-09 11:00 |  |  |  |  | 12.19d |  |  | 4h | 400 |
| 35 | 2.4.4.1 | Mantis | 1d? | 2016-06-08 11:00 | 2016-06-09 11:00 | 33 |  |  |  | 12.19d |  | Letícia [50%] | 4h | 400 |
| 36 | 2.4.5 | Status Report | 1d? | 2016-06-08 10:00 | 2016-06-13 12:00 | 31 |  |  |  | 0d |  | Jesuel | 8h | 800 |
| 37 | 2.5 | **Release 03** | 10.06d? | 2016-06-13 13:00 | 2016-06-27 13:30 |  |  |  |  | 0d |  |  | 36.5h | 3,650 |
| 38 | 2.5.1 | **Desenvolvimento** | 1d? | 2016-06-13 13:00 | 2016-06-14 12:00 |  |  |  |  | 0.38d |  |  |  |  |
| 39 | 2.5.1.1 | RFC05 - Relatório Livros | 1d? | 2016-06-13 13:00 | 2016-06-14 12:00 | 36 |  |  |  | 0.38d | 0d |  |  |  |
| 40 | 2.5.2 | **Teste** | 0.38d | 2016-06-14 13:00 | 2016-06-14 16:00 |  | 2009-12-17 09:00 | 2009-12-18 09:00 | 1d? | 0.38d |  |  | 3h | 300 |
| 41 | 2.5.2.1 | RFC05 - Relatório Livros | 0.38d | 2016-06-14 13:00 | 2016-06-14 16:00 | 39 |  |  |  | 0.38d | 0d | Letícia | 3h | 300 |
| 42 | 2.5.3 | **Baseline de Configuração** | 0.12d? | 2016-06-14 16:00 | 2016-06-14 17:00 |  | 2009-12-17 09:00 | 2009-12-18 09:00 | 1d? | 7.56d |  |  | 1h | 100 |
| 43 | 2.5.3.1 | Git Hub | 0.12d? | 2016-06-14 16:00 | 2016-06-14 17:00 | 41 |  |  |  | 7.56d | 0d | Letícia | 1h | 100 |
| 44 | 2.5.4 | **Registro problemas (bugs)** | 1d? | 2016-06-15 08:00 | 2016-06-15 17:00 |  |  |  |  | 7.56d |  |  | 4h | 400 |
| 45 | 2.5.4.1 | Mantis | 1d? | 2016-06-15 08:00 | 2016-06-15 17:00 | 43 |  |  |  | 7.56d |  | Letícia [50%] | 4h | 400 |
| 46 | 2.5.5 | Status Report | 1d? | 2016-06-15 10:00 | 2016-06-20 12:00 | 41 |  |  |  | 0d |  | Jesuel | 8h | 800 |
| 47 | 2.5.6 | **Release 04** | 5d? | 2016-06-20 13:00 | 2016-06-27 12:00 |  |  |  |  | 0.06d |  |  | 20h | 2,000 |
| 48 | 2.5.6.1 | **Desenvolvimento** | 1d? | 2016-06-20 13:00 | 2016-06-21 12:00 |  |  |  |  | 0.62d |  |  | 8h | 800 |
| 49 | 2.5.6.1.1 | RFC06 - Relatório Usuários | 1d? | 2016-06-20 13:00 | 2016-06-21 12:00 | 46 |  |  |  | 0.62d | 0d | Letícia | 8h | 800 |

| ID | WBS | Task | Duration | Start | Finish | Predecessors | Baseline start | Baseline finish | Baseline duration | Total slack | Free slack | Resources | Work | Cost |
| --- | --- | --- | --- | --- | --- | --- | --- | --- | --- | --- | --- | --- | --- | --- |
| 50 | 2.5.6.2 | **Teste** | 0.12d | 2016-06-21 13:00 | 2016-06-21 14:00 |  | 2009-12-17 09:00 | 2009-12-18 09:00 | 1d? | 0.62d |  |  | 1h | 100 |
| 51 | 2.5.6.2.1 | RFC06 - Relatório Usuários | 0.12d | 2016-06-21 13:00 | 2016-06-21 14:00 | 49 |  |  |  | 0.62d | 0d | Letícia | 1h | 100 |
| 52 | 2.5.6.3 | **Baseline de Configuração** | 0.12d? | 2016-06-21 14:00 | 2016-06-21 15:00 |  | 2009-12-17 09:00 | 2009-12-18 09:00 | 1d? | 3.31d |  |  | 1h | 100 |
| 53 | 2.5.6.3.1 | Git Hub | 0.12d? | 2016-06-21 14:00 | 2016-06-21 15:00 | 51 |  |  |  | 3.31d | 0d | Letícia | 1h | 100 |
| 54 | 2.5.6.4 | **Registro problemas (bugs)** | 0.5d? | 2016-06-21 15:00 | 2016-06-22 10:00 |  |  |  |  | 3.31d |  |  | 2h | 200 |
| 55 | 2.5.6.4.1 | Mantis | 0.5d? | 2016-06-21 15:00 | 2016-06-22 10:00 | 53 |  |  |  | 3.31d |  | Letícia [50%] | 2h | 200 |
| 56 | 2.5.6.5 | Status Report | 1d? | 2016-06-22 10:00 | 2016-06-27 12:00 | 51 |  |  |  | 0d |  | Jesuel | 8h | 800 |
| 57 | 2.5.7 | Fechamento | 0.06d? | 2016-06-27 13:00 | 2016-06-27 13:30 | 24, 36, 46, 56 | 2009-12-17 09:00 | 2009-12-18 09:00 | 1d? | 0d |  | Letícia | 0.5h | 50 |
